# 17_Assignment1

Schedule from MS Project, 2016-03-13 to 2016-06-21, status date 2016-04-03, 5 hours a day, A marks actual dates.

## Calendars

- Israel: Mon-Thu 17:00-22:00; Fri-Sat off; Sun 17:00-22:00.
- Braude: Mon-Thu 17:00-22:00; Fri-Sat off; Sun 17:00-22:00.

## Resources

| Resource |
| --- |
| Guy Berger |
| Adi Eliahu |
| Yana Ostrovski |
| Livnat Menashe |
| Liran Uziel |

## Schedule

| ID | WBS | Task | Type | Duration | Start | Finish | Predecessors | Complete | Actual finish | Constraint | Calendar | Resources | Work | Actual work |
| --- | --- | --- | --- | --- | --- | --- | --- | --- | --- | --- | --- | --- | --- | --- |
| 1 | 1 | **Scope** |  | 1d | 2016-03-13 17:00 A | 2016-03-13 22:00 A |  | 100% |  |  | Braude |  | 5h | 5h |
| 2 | 1.1 | Define preliminary resources | manual | 1d | 2016-03-13 17:00 A | 2016-03-13 22:00 A |  | 100% |  |  | Braude | Livnat Menashe [20%]; Yana Ostrovski [20%]; Adi Eliahu [20%]; Guy Berger [20%]; Liran Uziel [20%] | 5h | 5h |
| 3 | 2 | Scope complete | milestone, manual | 0d | 2016-03-13 17:00 A | 2016-03-13 17:00 A |  | 100% |  | start no earlier than 2016-04-03 22:00 | Braude |  |  |  |
| 4 | 3 | **Submission ONE: Project Planning, Use Case Diagram, Questions, & Acceptance Testing** |  | 15d | 2016-03-14 17:00 A | 2016-04-03 22:00 |  | 100% | 2016-03-30 19:30 |  | Braude |  | 122h | 122h |
| 5 | 3.1 | **week 1** |  | 7d | 2016-03-14 17:00 A | 2016-03-22 22:00 A |  | 100% |  |  | Braude |  | 64.5h | 64.5h |
| 6 | 3.1.1 | Planning of a project | manual | 1d | 2016-03-14 17:00 A | 2016-03-14 22:00 A | 2 | 100% |  |  | Braude | Livnat Menashe [20%]; Yana Ostrovski [20%]; Adi Eliahu [20%]; Guy Berger [20%]; Liran Uziel [20%] | 5h | 5h |
| 7 | 3.1.2 | **Design of a system Step1** |  | 4d | 2016-03-15 17:00 A | 2016-03-20 22:00 | 6 | 100% | 2016-03-20 19:30 |  | Braude |  | 52.5h | 52.5h |
| 8 | 3.1.2.1 | Creating Use Case diagram | manual | 1d | 2016-03-15 17:00 A | 2016-03-15 22:00 A | 6 | 100% |  |  | Braude |  |  |  |
| 9 | 3.1.2.2 | **Description of the Use Cases (Creating flow of events, info notes, etc.)** |  | 3d | 2016-03-16 17:00 A | 2016-03-20 22:00 | 8 | 100% | 2016-03-20 19:30 |  | Braude |  | 52.5h | 52.5h |
| 10 | 3.1.2.2.1 | Description of <Viewing lab test referral> | manual | 2.5h | 2016-03-16 17:00 A | 2016-03-16 19:30 A |  | 100% |  |  | Braude | Guy Berger | 2.5h | 2.5h |
| 11 | 3.1.2.2.2 | Description of <Insert lab test results> | manual | 2.5h | 2016-03-16 17:00 A | 2016-03-16 19:30 A |  | 100% |  |  | Braude | Adi Eliahu | 2.5h | 2.5h |
| 12 | 3.1.2.2.3 | Description of <Add pictures> | manual | 2.5h | 2016-03-16 17:00 A | 2016-03-16 19:30 A |  | 100% |  |  | Braude | Yana Ostrovski | 2.5h | 2.5h |
| 13 | 3.1.2.2.4 | Description of <Logout>,<Login> | manual | 2.5h | 2016-03-16 17:00 A | 2016-03-16 19:30 A |  | 100% |  |  | Braude | Livnat Menashe | 2.5h | 2.5h |
| 14 | 3.1.2.2.5 | Description of <View workers details> | manual | 2.5h | 2016-03-16 17:00 A | 2016-03-16 19:30 A |  | 100% |  |  | Braude | Liran Uziel | 2.5h | 2.5h |
| 15 | 3.1.2.2.6 | Description of <Produce report by period> | manual | 2.5h | 2016-03-16 17:00 A | 2016-03-16 19:30 A |  | 100% |  |  | Braude | Guy Berger | 2.5h | 2.5h |
| 16 | 3.1.2.2.7 | Description of <Produce report for the last months> | manual | 2.5h | 2016-03-16 17:00 A | 2016-03-16 19:30 A |  | 100% |  |  | Braude | Adi Eliahu | 2.5h | 2.5h |
| 17 | 3.1.2.2.8 | Description of <Produce report by N months> | manual | 2.5h | 2016-03-16 17:00 A | 2016-03-16 19:30 A |  | 100% |  |  | Braude | Yana Ostrovski | 2.5h | 2.5h |
| 18 | 3.1.2.2.9 | Description of <Announced for arrival> | manual | 2.5h | 2016-03-16 17:00 A | 2016-03-16 19:30 A |  | 100% |  |  | Braude | Livnat Menashe | 2.5h | 2.5h |
| 19 | 3.1.2.2.10 | Description of <Viewing Medical history> | manual | 2.5h | 2016-03-16 17:00 A | 2016-03-16 19:30 A |  | 100% |  |  | Braude | Liran Uziel | 2.5h | 2.5h |
| 20 | 3.1.2.2.11 | Description of <Send approve> | manual | 2.5h | 2016-03-16 17:00 A | 2016-03-16 19:30 A |  | 100% |  |  | Braude | Guy Berger | 2.5h | 2.5h |
| 21 | 3.1.2.2.12 | Description of <make apponitment> | manual | 2.5h | 2016-03-16 17:00 A | 2016-03-16 19:30 A |  | 100% |  |  | Braude | Adi Eliahu | 2.5h | 2.5h |
| 22 | 3.1.2.2.13 | Description of <Insert referral from doctor> | manual | 2.5h | 2016-03-16 17:00 A | 2016-03-16 19:30 A |  | 100% |  |  | Braude | Yana Ostrovski | 2.5h | 2.5h |
| 23 | 3.1.2.2.14 | Description of <Record appointment> | manual | 2.5h | 2016-03-16 17:00 A | 2016-03-16 19:30 A |  | 100% |  |  | Braude | Livnat Menashe | 2.5h | 2.5h |
| 24 | 3.1.2.2.15 | Description of <verifying details> | manual | 2.5h | 2016-03-16 17:00 A | 2016-03-16 19:30 A |  | 100% |  |  | Braude | Liran Uziel | 2.5h | 2.5h |
| 25 | 3.1.2.2.16 | Description of <View patient medical history> | manual | 2.5h | 2016-03-16 17:00 A | 2016-03-16 19:30 A |  | 100% |  |  | Braude | Guy Berger | 2.5h | 2.5h |
| 26 | 3.1.2.2.17 | Description of <Produce referral for lab test> | manual | 2.5h | 2016-03-16 17:00 A | 2016-03-16 19:30 A |  | 100% |  |  | Braude | Adi Eliahu | 2.5h | 2.5h |
| 27 | 3.1.2.2.18 | Description of <view lab results> | manual | 2.5h | 2016-03-16 17:00 A | 2016-03-16 19:30 A |  | 100% |  |  | Braude | Yana Ostrovski | 2.5h | 2.5h |
| 28 | 3.1.2.2.19 | Description of <Ask for medical details> | manual | 2.5h | 2016-03-17 22:00 A | 2016-03-20 19:30 A |  | 100% |  |  | Braude | Livnat Menashe | 2.5h | 2.5h |
| 29 | 3.1.2.2.20 | Description of <Send report to the referring doctor> | manual | 2.5h | 2016-03-20 17:00 A | 2016-03-20 19:30 A |  | 100% |  |  | Braude | Liran Uziel | 2.5h | 2.5h |
| 30 | 3.1.2.2.21 | Description of <Get medical details by expertise> | manual | 2.5h | 2016-03-20 17:00 A | 2016-03-20 19:30 A |  | 100% |  |  | Braude | Guy Berger | 2.5h | 2.5h |
| 31 | 3.1.3 | Meeting - Review Use Case Diagram | manual | 2h | 2016-03-21 17:00 A | 2016-03-21 19:00 A | 9 | 100% |  |  | Braude | Livnat Menashe [20%]; Yana Ostrovski [20%]; Adi Eliahu [20%]; Guy Berger [20%]; Liran Uziel [20%] | 2h | 2h |
| 32 | 3.1.4 | Fixing found problems | manual | 1d | 2016-03-22 17:00 A | 2016-03-22 22:00 A | 31 | 100% |  |  | Braude | Livnat Menashe [20%]; Yana Ostrovski [20%]; Adi Eliahu [20%]; Guy Berger [20%]; Liran Uziel [20%] | 5h | 5h |
| 33 | 3.1.5 | Use Case Diagram is finished | milestone, manual | 0d | 2016-03-14 17:00 A | 2016-03-14 17:00 A |  | 100% |  |  | Braude |  |  |  |

| ID | WBS | Task | Type | Duration | Start | Finish | Predecessors | Complete | Actual finish | Calendar | Resources | Work | Actual work |
| --- | --- | --- | --- | --- | --- | --- | --- | --- | --- | --- | --- | --- | --- |
| 34 | 3.2 | **week 2** |  | 7d | 2016-03-22 17:00 A | 2016-03-30 22:00 |  | 100% | 2016-03-30 19:30 | Braude |  | 57.5h | 57.5h |
| 35 | 3.2.1 | Creating Project Time Management | milestone, manual | 0d | 2016-03-22 17:00 A | 2016-03-22 17:00 A | 8 | 100% |  | Braude | Guy Berger [33%]; Yana Ostrovski [33%]; Liran Uziel [33%] |  |  |
| 36 | 3.2.2 | **Creating Acceptance Testing** |  | 3d | 2016-03-23 17:00 A | 2016-03-27 22:00 A | 9 | 100% |  | Braude |  | 52.5h | 52.5h |
| 37 | 3.2.2.1 | Test Case for functionality of <Viewing lab test referral> | manual | 2.5h | 2016-03-23 17:00 A | 2016-03-24 19:30 A | 10 | 100% |  | Braude | Guy Berger | 2.5h | 2.5h |
| 38 | 3.2.2.2 | Test Case for functionality of <Insert lab test results> | manual | 2.5h | 2016-03-23 17:00 A | 2016-03-24 19:30 A | 11 | 100% |  | Braude | Adi Eliahu | 2.5h | 2.5h |
| 39 | 3.2.2.3 | Test Case for functionality of <Add pictures> | manual | 2.5h | 2016-03-23 17:00 A | 2016-03-24 19:30 A | 12 | 100% |  | Braude | Yana Ostrovski | 2.5h | 2.5h |
| 40 | 3.2.2.4 | Test Case for functionality of <Logout>,<Login> | manual | 2.5h | 2016-03-23 17:00 A | 2016-03-24 19:30 A | 13 | 100% |  | Braude | Livnat Menashe | 2.5h | 2.5h |
| 41 | 3.2.2.5 | Test Case for functionality of <View workers details> | manual | 2.5h | 2016-03-23 17:00 A | 2016-03-24 19:30 A | 14 | 100% |  | Braude | Guy Berger | 2.5h | 2.5h |
| 42 | 3.2.2.6 | Test Case for functionality of <Produce report by period> | manual | 2.5h | 2016-03-23 17:00 A | 2016-03-24 19:30 A | 15 | 100% |  | Braude | Adi Eliahu | 2.5h | 2.5h |
| 43 | 3.2.2.7 | Test Case for functionality of <Produce report for the last months> | manual | 2.5h | 2016-03-23 17:00 A | 2016-03-24 19:30 A | 16 | 100% |  | Braude | Yana Ostrovski | 2.5h | 2.5h |
| 44 | 3.2.2.8 | Test Case for functionality of <Produce report by N months> | manual | 2.5h | 2016-03-23 17:00 A | 2016-03-24 19:30 A | 17 | 100% |  | Braude | Livnat Menashe | 2.5h | 2.5h |
| 45 | 3.2.2.9 | Test Case for functionality of <Announced for arrival> | manual | 2.5h | 2016-03-24 17:00 A | 2016-03-27 19:30 A | 18 | 100% |  | Braude | Guy Berger | 2.5h | 2.5h |
| 46 | 3.2.2.10 | Test Case for functionality of <Viewing Medical history> | manual | 2.5h | 2016-03-24 17:00 A | 2016-03-27 19:30 A | 19 | 100% |  | Braude | Adi Eliahu | 2.5h | 2.5h |
| 47 | 3.2.2.11 | Test Case for functionality of <Send approve> | manual | 2.5h | 2016-03-24 17:00 A | 2016-03-27 19:30 A | 20 | 100% |  | Braude | Yana Ostrovski | 2.5h | 2.5h |
| 48 | 3.2.2.12 | Test Case for functionality of <make apponitment> | manual | 2.5h | 2016-03-24 17:00 A | 2016-03-27 19:30 A | 21 | 100% |  | Braude | Livnat Menashe | 2.5h | 2.5h |
| 49 | 3.2.2.13 | Test Case for functionality of <Insert referral from doctor> | manual | 2.5h | 2016-03-24 17:00 A | 2016-03-27 19:30 A | 22 | 100% |  | Braude | Guy Berger | 2.5h | 2.5h |
| 50 | 3.2.2.14 | Test Case for functionality of <Record appointment> | manual | 2.5h | 2016-03-24 17:00 A | 2016-03-27 19:30 A | 23 | 100% |  | Braude | Adi Eliahu | 2.5h | 2.5h |
| 51 | 3.2.2.15 | Test Case for functionality of <verifying details> | manual | 2.5h | 2016-03-24 17:00 A | 2016-03-27 19:30 A | 24 | 100% |  | Braude | Yana Ostrovski | 2.5h | 2.5h |
| 52 | 3.2.2.16 | Test Case for functionality of <View patient medical history> | manual | 2.5h | 2016-03-24 17:00 A | 2016-03-27 19:30 A | 25 | 100% |  | Braude | Livnat Menashe | 2.5h | 2.5h |
| 53 | 3.2.2.17 | Test Case for functionality of <Produce referral for lab test> | manual | 2.5h | 2016-03-27 17:00 A | 2016-03-27 19:30 A | 26 | 100% |  | Braude | Guy Berger | 2.5h | 2.5h |
| 54 | 3.2.2.18 | Test Case for functionality of <view lab results> | manual | 2.5h | 2016-03-27 17:00 A | 2016-03-27 19:30 A | 27 | 100% |  | Braude | Adi Eliahu | 2.5h | 2.5h |
| 55 | 3.2.2.19 | Test Case for functionality of <Ask for medical details> | manual | 2.5h | 2016-03-27 17:00 A | 2016-03-27 19:30 A | 28 | 100% |  | Braude | Yana Ostrovski | 2.5h | 2.5h |
| 56 | 3.2.2.20 | Test Case for functionality of <Send report to the referring doctor> | manual | 2.5h | 2016-03-27 17:00 A | 2016-03-27 19:30 A | 29 | 100% |  | Braude | Livnat Menashe | 2.5h | 2.5h |
| 57 | 3.2.2.21 | Test Case for functionality of <Get medical details by expertise> | manual | 2.5h | 2016-03-27 17:00 A | 2016-03-27 19:30 A | 30 | 100% |  | Braude | Guy Berger | 2.5h | 2.5h |
| 58 | 3.2.2.22 | Meeting - Review Acceptance Testing | milestone, manual | 0h | 2016-03-27 17:00 A | 2016-03-27 17:00 A |  | 100% |  | Braude | Livnat Menashe [25%]; Yana Ostrovski [25%]; Adi Eliahu [25%]; Guy Berger [25%] |  |  |
| 59 | 3.2.2.23 | Acceptance Testing is finished | manual | 5h | 2016-03-27 17:00 A | 2016-03-27 22:00 A |  | 100% |  | Braude |  |  |  |
| 60 | 3.2.3 | Answer questions | manual | 2.5h | 2016-03-29 17:00 A | 2016-03-29 19:30 A | 36 | 100% |  | Braude | Livnat Menashe [50%]; Yana Ostrovski [50%] | 2.5h | 2.5h |
| 61 | 3.2.4 | Meeting - Review all tasks | manual | 2.5h | 2016-03-30 17:00 A | 2016-03-30 19:30 A | 9, 35, 36, 8 | 100% |  | Braude | Livnat Menashe [20%]; Yana Ostrovski [20%]; Adi Eliahu [20%]; Guy Berger [20%]; Liran Uziel [20%] | 2.5h | 2.5h |
| 62 | 4 | Submit assignment ONE | manual | 1d | 2016-04-04 17:00 | 2016-04-04 22:00 |  |  |  | Braude |  |  |  |

| ID | WBS | Task | Type | Duration | Start | Finish | Predecessors | Calendar | Resources | Work |
| --- | --- | --- | --- | --- | --- | --- | --- | --- | --- | --- |
| 63 | 5 | **Submission TWO: Class, Activity, Sequence, Package, Deployment Diagrams, Prototype, Questions** |  | 20d | 2016-04-05 17:00 | 2016-05-02 22:00 | 62 | Braude |  | 168.43h |
| 64 | 5.1 | **Design of a system Step2** |  | 20d | 2016-04-05 17:00 | 2016-05-02 22:00 |  | Braude |  | 168.43h |
| 65 | 5.1.1 | **week 3** |  | 7d | 2016-04-05 17:00 | 2016-04-13 22:00 |  | Braude |  | 76.92h |
| 66 | 5.1.1.1 | **Creating Class diagram** |  | 3d | 2016-04-05 17:00 | 2016-04-07 22:00 |  | Braude |  | 21.93h |
| 67 | 5.1.1.1.1 | Defining packages | manual | 1d | 2016-04-05 17:00 | 2016-04-05 22:00 |  | Braude | Livnat Menashe [20%]; Yana Ostrovski [20%]; Adi Eliahu [20%]; Guy Berger [20%]; Liran Uziel [20%] | 5h |
| 68 | 5.1.1.1.2 | Defining Classes and Interfaces | manual | 1.5d | 2016-04-06 17:00 | 2016-04-07 19:30 |  | Braude | Adi Eliahu [50%]; Guy Berger [50%] | 7.5h |
| 69 | 5.1.1.1.3 | Defining APIs, Controllers, and Entities | manual | 1.5d | 2016-04-06 17:00 | 2016-04-07 19:30 |  | Braude | Livnat Menashe [33%]; Yana Ostrovski [33%]; Liran Uziel [33%] | 7.42h |
| 70 | 5.1.1.1.4 | Meeting - Review Class Diagram | manual | 2h | 2016-04-07 17:00 | 2016-04-07 19:00 |  | Braude | Adi Eliahu [20%]; Guy Berger [20%]; Liran Uziel [20%]; Livnat Menashe [20%]; Yana Ostrovski [20%] | 2h |
| 71 | 5.1.1.1.5 | Class Diagram is finished | milestone, manual | 0d | 2016-04-05 17:00 | 2016-04-05 17:00 |  | Braude |  |  |
| 72 | 5.1.1.2 | **Creating Activity Diagrams** |  | 4d | 2016-04-10 17:00 | 2016-04-13 22:00 | 9 | Braude |  | 55h |
| 73 | 5.1.1.2.1 | <Log in, Log out> activity diagrams | manual | 2.5h | 2016-04-10 17:00 | 2016-04-10 19:30 | 37 | Braude | Guy Berger | 2.5h |
| 74 | 5.1.1.2.2 | <Updating client details> activity diagram | manual | 2.5h | 2016-04-10 17:00 | 2016-04-10 19:30 | 38 | Braude | Adi Eliahu | 2.5h |
| 75 | 5.1.1.2.3 | <Order fuel for home use> activity diagram | manual | 2.5h | 2016-04-10 17:00 | 2016-04-10 19:30 | 39 | Braude | Yana Ostrovski | 2.5h |
| 76 | 5.1.1.2.4 | <Follow order> activity diagram | manual | 2.5h | 2016-04-10 17:00 | 2016-04-10 19:30 | 40 | Braude | Livnat Menashe | 2.5h |
| 77 | 5.1.1.2.5 | <Client registration> activity diagram | manual | 2.5h | 2016-04-10 17:00 | 2016-04-10 19:30 | 41 | Braude | Guy Berger | 2.5h |
| 78 | 5.1.1.2.6 | <Watch Quarterly Reports> activity diagram | manual | 2.5h | 2016-04-10 17:00 | 2016-04-10 19:30 | 42 | Braude | Adi Eliahu | 2.5h |
| 79 | 5.1.1.2.7 | <Produce customer data rating> activity diagram | manual | 2.5h | 2016-04-10 17:00 | 2016-04-10 19:30 | 43 | Braude | Yana Ostrovski | 2.5h |
| 80 | 5.1.1.2.8 | <Campaign pattern defining> activity diagram | manual | 2.5h | 2016-04-10 17:00 | 2016-04-10 19:30 | 44 | Braude | Livnat Menashe | 2.5h |
| 81 | 5.1.1.2.9 | <Update maximum fuel price> activity diagram | manual | 2.5h | 2016-04-11 17:00 | 2016-04-11 19:30 | 45 | Braude | Guy Berger | 2.5h |
| 82 | 5.1.1.2.10 | <Planes Price change request> activity diagram | manual | 2.5h | 2016-04-11 17:00 | 2016-04-11 19:30 | 46 | Braude | Adi Eliahu | 2.5h |
| 83 | 5.1.1.2.11 | <Update planes price> activity diagram | manual | 2.5h | 2016-04-11 17:00 | 2016-04-11 19:30 | 47 | Braude | Yana Ostrovski | 2.5h |
| 84 | 5.1.1.2.12 | <Activate campaign pattern> activity diagram | manual | 2.5h | 2016-04-11 17:00 | 2016-04-11 19:30 | 48 | Braude | Livnat Menashe | 2.5h |
| 85 | 5.1.1.2.13 | <Produce a respond report of marketing campaignr> activity diagram | manual | 2.5h | 2016-04-11 17:00 | 2016-04-11 19:30 | 49 | Braude | Guy Berger | 2.5h |
| 86 | 5.1.1.2.14 | <Produce a period customer characterization report> activity diagram | manual | 2.5h | 2016-04-11 17:00 | 2016-04-11 19:30 | 50 | Braude | Adi Eliahu | 2.5h |
| 87 | 5.1.1.2.15 | <Send response> activity diagram | manual | 2.5h | 2016-04-11 17:00 | 2016-04-11 19:30 | 51 | Braude | Yana Ostrovski | 2.5h |
| 88 | 5.1.1.2.16 | <Produce Quarterly Reports> activity diagram | manual | 2.5h | 2016-04-11 17:00 | 2016-04-11 19:30 | 52 | Braude | Livnat Menashe | 2.5h |
| 89 | 5.1.1.2.17 | <Approve fuel order> activity diagram | manual | 2.5h | 2016-04-12 17:00 | 2016-04-12 19:30 | 53 | Braude | Guy Berger | 2.5h |
| 90 | 5.1.1.2.18 | <Determining the threshold level for receiving alert> activity diagram | manual | 2.5h | 2016-04-12 17:00 | 2016-04-12 19:30 | 54 | Braude | Adi Eliahu | 2.5h |
| 91 | 5.1.1.2.19 | <Insert fuel stock> activity diagram | manual | 2.5h | 2016-04-12 17:00 | 2016-04-12 19:30 | 55 | Braude | Yana Ostrovski | 2.5h |
| 92 | 5.1.1.2.20 | <Identify client details> activity diagram | manual | 2.5h | 2016-04-12 17:00 | 2016-04-12 19:30 | 56 | Braude | Livnat Menashe | 2.5h |
| 93 | 5.1.1.2.21 | <Send fuel sale> activity diagram | manual | 2.5h | 2016-04-12 17:00 | 2016-04-12 19:30 | 57 | Braude | Guy Berger | 2.5h |
| 94 | 5.1.1.2.22 | Meeting - Review Activity Diagram | manual | 2.5h | 2016-04-12 17:00 | 2016-04-12 19:30 |  | Braude | Livnat Menashe [25%]; Yana Ostrovski [25%]; Adi Eliahu [25%]; Guy Berger [25%] | 2.5h |
| 95 | 5.1.1.2.23 | Activity Diagram is finished | milestone, manual | 0d | 2016-04-10 17:00 | 2016-04-10 17:00 |  | Braude |  |  |

| ID | WBS | Task | Type | Duration | Start | Finish | Predecessors | Calendar | Resources | Work |
| --- | --- | --- | --- | --- | --- | --- | --- | --- | --- | --- |
| 96 | 5.1.2 | **week 4** |  | 7d | 2016-04-14 17:00 | 2016-04-24 22:00 |  |  |  | 64.5h |
| 97 | 5.1.2.1 | **Creating Sequence Diagrams** |  | 4d | 2016-04-15 17:00 | 2016-04-19 22:00 | 66 | Braude |  | 55h |
| 98 | 5.1.2.1.1 | <Viewing lab test referral> Sequence Diagram | manual | 2.5h | 2016-04-15 17:00 | 2016-04-15 19:30 |  | Braude | Guy Berger | 2.5h |
| 99 | 5.1.2.1.2 | <Insert lab test results> Sequence Diagram | manual | 2.5h | 2016-04-15 17:00 | 2016-04-15 19:30 |  | Braude | Adi Eliahu | 2.5h |
| 100 | 5.1.2.1.3 | <Add pictures> Sequence Diagram | manual | 2.5h | 2016-04-15 17:00 | 2016-04-15 19:30 |  | Braude | Yana Ostrovski | 2.5h |
| 101 | 5.1.2.1.4 | <Logout>,<Login> Sequence Diagram | manual | 2.5h | 2016-04-15 17:00 | 2016-04-15 19:30 |  | Braude | Livnat Menashe | 2.5h |
| 102 | 5.1.2.1.5 | <View workers details> Sequence Diagram | manual | 2.5h | 2016-04-17 17:00 | 2016-04-17 19:30 |  | Braude | Guy Berger | 2.5h |
| 103 | 5.1.2.1.6 | <Insert weekly sales> Sequence Diagram | manual | 2.5h | 2016-04-17 17:00 | 2016-04-17 19:30 |  | Braude | Adi Eliahu | 2.5h |
| 104 | 5.1.2.1.7 | <Produce report for the last months> Sequence Diagram | manual | 2.5h | 2016-04-17 17:00 | 2016-04-17 19:30 |  | Braude | Yana Ostrovski | 2.5h |
| 105 | 5.1.2.1.8 | <Produce report by N months> Sequence Diagram | manual | 2.5h | 2016-04-17 17:00 | 2016-04-17 19:30 |  | Braude | Livnat Menashe | 2.5h |
| 106 | 5.1.2.1.9 | <Announced for arrival> Sequence Diagram | manual | 2.5h | 2016-04-17 17:00 | 2016-04-17 19:30 |  | Braude | Guy Berger | 2.5h |
| 107 | 5.1.2.1.10 | <Viewing Medical history> Sequence Diagram | manual | 2.5h | 2016-04-17 17:00 | 2016-04-17 19:30 |  | Braude | Adi Eliahu | 2.5h |
| 108 | 5.1.2.1.11 | <Viewing Medical history> Sequence Diagram | manual | 2.5h | 2016-04-17 17:00 | 2016-04-17 19:30 |  | Braude | Yana Ostrovski | 2.5h |
| 109 | 5.1.2.1.12 | <Send approve> Sequence Diagram | manual | 2.5h | 2016-04-17 17:00 | 2016-04-17 19:30 |  | Braude | Livnat Menashe | 2.5h |
| 110 | 5.1.2.1.13 | <make apponitment> Sequence Diagram | manual | 2.5h | 2016-04-18 17:00 | 2016-04-18 19:30 |  | Braude | Guy Berger | 2.5h |
| 111 | 5.1.2.1.14 | <Insert referral from doctor> Sequence Diagram | manual | 2.5h | 2016-04-18 17:00 | 2016-04-18 19:30 |  | Braude | Adi Eliahu | 2.5h |
| 112 | 5.1.2.1.15 | <Record appointment> Sequence Diagram | manual | 2.5h | 2016-04-18 17:00 | 2016-04-18 19:30 |  | Braude | Yana Ostrovski | 2.5h |
| 113 | 5.1.2.1.16 | <verifying details> Sequence Diagram | manual | 2.5h | 2016-04-18 17:00 | 2016-04-18 19:30 |  | Braude | Adi Eliahu | 2.5h |
| 114 | 5.1.2.1.17 | <View patient medical history> Sequence Diagram | manual | 2.5h | 2016-04-18 17:00 | 2016-04-18 19:30 |  | Braude | Livnat Menashe | 2.5h |
| 115 | 5.1.2.1.18 | <Produce referral for lab test> Sequence Diagram | manual | 2.5h | 2016-04-18 17:00 | 2016-04-18 19:30 |  | Braude | Guy Berger | 2.5h |
| 116 | 5.1.2.1.19 | <view lab results> Sequence Diagram | manual | 2.5h | 2016-04-18 17:00 | 2016-04-18 19:30 |  | Braude | Adi Eliahu | 2.5h |
| 117 | 5.1.2.1.20 | <Ask for medical details> Sequence Diagram | manual | 2.5h | 2016-04-18 17:00 | 2016-04-18 19:30 |  | Braude | Yana Ostrovski | 2.5h |
| 118 | 5.1.2.1.21 | <Send report to the referring doctor> Sequence Diagram | manual | 2.5h | 2016-04-18 17:00 | 2016-04-18 19:30 |  | Braude | Livnat Menashe | 2.5h |
| 119 | 5.1.2.1.22 | <Get medical details by expertise> Sequence Diagram | manual | 2.5h | 2016-04-19 17:00 | 2016-04-19 19:30 |  | Braude | Guy Berger | 2.5h |
| 120 | 5.1.2.1.23 | Meeting - Review Sequence Diagram | manual | 2.5h | 2016-04-19 17:00 | 2016-04-19 19:30 |  | Braude |  |  |
| 121 | 5.1.2.1.24 | Sequence Diagram is finished | manual | 1.8d | 2016-04-15 17:00 | 2016-04-17 21:00 |  | Braude |  |  |
| 122 | 5.1.2.2 | Creating Packages and Deployment diagrams | manual | 1.5d | 2016-04-20 17:00 | 2016-04-21 19:30 | 66 | Braude | Livnat Menashe [20%]; Yana Ostrovski [20%]; Adi Eliahu [20%]; Guy Berger [20%]; Liran Uziel [20%] | 7.5h |
| 123 | 5.1.2.3 | Meeting - Review Packages & Deployment Diagrams | manual | 2h | 2016-04-22 17:00 | 2016-04-22 19:00 | 66, 72, 97, 122 | Braude | Livnat Menashe [20%]; Yana Ostrovski [20%]; Adi Eliahu [20%]; Guy Berger [20%]; Liran Uziel [20%] | 2h |
| 124 | 5.1.2.4 | Packages & Deployment Diagrams are finished | milestone, manual | 0d | 2016-04-14 17:00 | 2016-04-14 17:00 |  | Braude |  |  |

| ID | WBS | Task | Type | Duration | Start | Finish | Predecessors | Total slack | Calendar | Resources | Work |
| --- | --- | --- | --- | --- | --- | --- | --- | --- | --- | --- | --- |
| 125 | 5.1.3 | **week 5** |  | 5d | 2016-04-25 17:00 | 2016-05-01 22:00 |  | 0d |  |  | 27h |
| 126 | 5.1.3.1 | Answer questions | manual | 2h | 2016-04-25 17:00 | 2016-04-25 19:00 |  |  | Braude | Livnat Menashe [50%]; Adi Eliahu [50%] | 2h |
| 127 | 5.1.3.2 | Development Prototype on the base of OCSF | manual | 3d | 2016-04-25 17:00 | 2016-04-27 22:00 | 7, 36 |  | Braude | Livnat Menashe [20%]; Yana Ostrovski [20%]; Adi Eliahu [20%]; Guy Berger [20%]; Liran Uziel [20%] | 15h |
| 128 | 5.1.3.3 | Testing Prototype | manual | 2d | 2016-04-28 17:00 | 2016-05-01 22:00 | 127 |  | Braude | Livnat Menashe [20%]; Yana Ostrovski [20%]; Adi Eliahu [20%]; Guy Berger [20%]; Liran Uziel [20%] | 10h |
| 129 | 5.1.3.4 | Releasing Prototype | milestone, manual | 0d | 2016-05-01 17:00 | 2016-05-01 17:00 |  |  | Braude |  |  |
| 130 | 6 | Submission TWO is finished | milestone, manual | 0d | 2016-05-02 17:00 | 2016-05-02 17:00 |  |  | Braude |  |  |
| 131 | 7 | **Submission THREE: Development Code, Questions** |  | 33d | 2016-05-02 17:00 | 2016-06-15 22:00 | 129 |  | Braude |  | 141.5h |
| 132 | 7.1 | **Development project code on the base of Class and other diagrams** |  | 31d | 2016-05-02 17:00 | 2016-06-13 22:00 |  |  | Braude |  | 116.5h |
| 133 | 7.1.1 | **Development DataBase** |  | 3d | 2016-05-02 17:00 | 2016-05-04 22:00 |  |  | Braude | Guy Berger [50%] | 12.5h |
| 134 | 7.1.1.1 | **week 6** |  | 3d | 2016-05-02 17:00 | 2016-05-04 22:00 |  |  |  |  | 5h |
| 135 | 7.1.1.1.1 | Defining and creating: <Name of Table 1>, <Name of Table 2> | manual | 0.5d | 2016-05-02 17:00 | 2016-05-02 19:30 |  |  | Braude | Liran Uziel | 2.5h |
| 136 | 7.1.1.1.2 | Defining and creating <Name of Table 2> | manual | 0.5d | 2016-05-02 17:00 | 2016-05-02 19:30 |  |  | Braude | Livnat Menashe | 2.5h |
| 137 | 7.1.2 | **Realization Three-tier Model** |  | 25d | 2016-05-03 17:00 | 2016-06-06 22:00 |  |  | Braude |  | 104h |
| 138 | 7.1.2.1 | **Client Design and Realization** |  | 6d | 2016-05-03 17:00 | 2016-05-10 22:00 |  |  | Braude |  | 27.5h |
| 139 | 7.1.2.1.1 | **week 6** |  | 4d | 2016-05-03 17:00 | 2016-05-08 22:00 |  | 0d |  |  | 20h |
| 140 | 7.1.2.1.1.1 | Client GUI design and realization | manual | 2d | 2016-05-03 17:00 | 2016-05-04 22:00 |  |  | Braude | Adi Eliahu | 10h |
| 141 | 7.1.2.1.1.2 | Defining Controllers and their realization | manual | 2d | 2016-05-05 17:00 | 2016-05-08 22:00 |  |  | Braude | Adi Eliahu | 10h |
| 142 | 7.1.2.1.2 | **week 7** |  | 1.5d | 2016-05-09 17:00 | 2016-05-10 19:30 |  | 0d |  |  | 7.5h |
| 143 | 7.1.2.1.2.1 | Testing & Debugging Code | manual | 1.5d | 2016-05-09 17:00 | 2016-05-10 19:30 |  |  | Braude | Adi Eliahu | 7.5h |
| 144 | 7.1.2.2 | **Server design and realization** |  | 13d | 2016-05-10 17:00 | 2016-05-26 22:00 |  |  | Braude |  | 35h |
| 145 | 7.1.2.2.1 | **week 7** |  | 5d | 2016-05-10 17:00 | 2016-05-16 22:00 |  | 0d |  |  | 25h |
| 146 | 7.1.2.2.1.1 | Server GUI | manual | 2d | 2016-05-10 17:00 | 2016-05-11 22:00 |  |  | Braude | Yana Ostrovski | 10h |
| 147 | 7.1.2.2.1.2 | Realization interaction with DataBase | manual | 2d | 2016-05-12 17:00 | 2016-05-15 22:00 |  |  | Braude | Yana Ostrovski | 10h |
| 148 | 7.1.2.2.1.3 | Testing & Debugging Code | manual | 1d | 2016-05-16 17:00 | 2016-05-16 22:00 |  |  | Braude | Yana Ostrovski | 5h |

| ID | WBS | Task | Type | Duration | Start | Finish | Predecessors | Total slack | Calendar | Resources | Work |
| --- | --- | --- | --- | --- | --- | --- | --- | --- | --- | --- | --- |
| 149 | 7.1.2.2.2 | **Realization Controllers** |  | 3d | 2016-05-24 17:00 | 2016-05-26 22:00 |  |  | Braude |  | 10h |
| 150 | 7.1.2.2.2.1 | **week 8** |  | 3d | 2016-05-24 17:00 | 2016-05-26 22:00 |  |  |  |  | 10h |
| 151 | 7.1.2.2.2.1.1 | Controller1, controller2 | manual | 0.5d | 2016-05-24 17:00 | 2016-05-24 19:30 |  |  | Braude | Livnat Menashe | 2.5h |
| 152 | 7.1.2.2.2.1.2 | Controller3 | manual | 0.5d | 2016-05-24 17:00 | 2016-05-24 19:30 |  |  | Braude | Livnat Menashe | 2.5h |
| 153 | 7.1.2.2.2.1.3 | Testing & Debugging Code | manual | 1d | 2016-05-25 17:00 | 2016-05-25 22:00 |  |  | Braude | Livnat Menashe | 5h |
| 154 | 7.1.2.3 | **Entity Realization JDBC/Hibernate (ORM) or their mix** |  | 4d | 2016-05-27 17:00 | 2016-05-31 22:00 |  |  | Braude |  | 4h |
| 155 | 7.1.2.3.1 | **week 8** |  | 4d | 2016-05-27 17:00 | 2016-05-31 22:00 |  |  |  |  | 4h |
| 156 | 7.1.2.3.1.1 | Realization <Entity1>, <Entity2>, <Entity3> | manual | 3h | 2016-05-27 17:00 | 2016-05-27 20:00 |  |  | Braude | Guy Berger | 3h |
| 157 | 7.1.2.3.1.2 | Realization <Entity4> | manual | 1h | 2016-05-27 17:00 | 2016-05-27 18:00 |  |  | Braude | Guy Berger | 1h |
| 158 | 7.1.2.4 | **week 9** |  | 7d | 2016-05-28 17:00 | 2016-06-05 22:00 |  |  |  |  | 37.5h |
| 159 | 7.1.2.4.1 | Realization Client-Server interaction on the base of OCSF | manual | 6d | 2016-05-28 17:00 | 2016-06-02 22:00 |  |  | Braude | Guy Berger | 30h |
| 160 | 7.1.2.4.2 | Testing & Debugging Code | manual | 1.5d | 2016-06-03 17:00 | 2016-06-05 19:30 |  |  | Braude | Guy Berger | 7.5h |
| 161 | 7.2 | **week 10** |  | 5d | 2016-06-06 17:00 | 2016-06-12 22:00 |  |  |  |  | 25h |
| 162 | 7.2.1 | Integration the Code | manual | 2d | 2016-06-06 17:00 | 2016-06-07 22:00 |  |  | Braude | Liran Uziel | 10h |
| 163 | 7.2.2 | Final review meeting | manual | 15h | 2016-06-08 17:00 | 2016-06-12 22:00 |  |  | Braude | Livnat Menashe [20%]; Yana Ostrovski [20%]; Adi Eliahu [20%]; Guy Berger [20%]; Liran Uziel [20%] | 15h |
| 164 | 8 | Submission THREE is finished | milestone, manual | 0d | 2016-06-13 17:00 | 2016-06-13 17:00 |  |  | Braude |  |  |
| 165 | 9 | **Submission FOUR: Testing Project** |  | 7d | 2016-06-13 17:00 | 2016-06-21 22:00 | 164 |  | Braude |  | 30h |
| 166 | 9.1 | **Testing Project** |  | 7d | 2016-06-13 17:00 | 2016-06-21 22:00 |  |  | Braude |  | 30h |
| 167 | 9.1.1 | **Unit Testing** |  | 2d | 2016-06-13 17:00 | 2016-06-14 22:00 |  |  | Braude |  | 10h |
| 168 | 9.1.1.1 | **week 10** |  | 2d | 2016-06-13 17:00 | 2016-06-14 22:00 |  | 0d |  |  | 10h |
| 169 | 9.1.1.1.1 | Functionality 1 (Method1(), Method2()) | manual | 1d | 2016-06-13 17:00 | 2016-06-13 22:00 |  |  | Braude | Adi Eliahu | 5h |
| 170 | 9.1.1.1.2 | Functionality 2 (Method1(), Method2()) | manual | 1d | 2016-06-14 17:00 | 2016-06-14 22:00 |  |  | Braude | Guy Berger | 5h |
| 171 | 9.1.2 | **Acceptance Testing** |  | 2d | 2016-06-15 17:00 | 2016-06-16 22:00 |  |  | Braude |  | 10h |
| 172 | 9.1.2.1 | **week 11** |  | 1d | 2016-06-15 17:00 | 2016-06-15 22:00 |  | 0d |  |  | 10h |
| 173 | 9.1.2.1.1 | Use Case 1 | manual | 1d | 2016-06-15 17:00 | 2016-06-15 22:00 |  |  | Braude | Livnat Menashe | 5h |
| 174 | 9.1.2.1.2 | Use Case 2 | manual | 1d | 2016-06-15 17:00 | 2016-06-15 22:00 |  |  | Braude | Yana Ostrovski | 5h |

| ID | WBS | Task | Type | Duration | Start | Finish | Total slack | Calendar | Resources | Work |
| --- | --- | --- | --- | --- | --- | --- | --- | --- | --- | --- |
| 175 | 9.1.3 | **week 11** |  | 2d | 2016-06-16 17:00 | 2016-06-19 22:00 | 0d |  |  | 10h |
| 176 | 9.1.3.1 | Testing and Debugging | manual | 2d | 2016-06-16 17:00 | 2016-06-19 22:00 |  | Braude | Livnat Menashe [20%]; Yana Ostrovski [20%]; Adi Eliahu [20%]; Guy Berger [20%]; Liran Uziel [20%] | 10h |
| 177 | 10 | Submission FOUR is finished | milestone, manual | 0d | 2016-06-21 17:00 | 2016-06-21 17:00 |  | Braude |  |  |
| 178 | 11 | Project is Finished! | milestone, manual | 0d | 2016-06-21 17:00 | 2016-06-21 17:00 |  | Braude |  |  |
